# FCMP++/Carrot Plan

Schedule from Planner, 2026-07-22 to 2027-02-04.
The Monero Project

## Calendars

- Default: Mon-Fri 08:00-12:00, 13:00-17:00; Sat-Sun off.

## Schedule

| ID | Task | Duration | Start | Finish | Predecessors | Complete | Constraint | Work |
| --- | --- | --- | --- | --- | --- | --- | --- | --- |
| 1 | Circuit + Gadget Library Audit | 20d | 2026-07-29 | 2026-08-25 |  |  | start no earlier than 2026-07-29 | 160h |
| 2 | FCMP++ Phase 2 audit | 20d | 2026-07-29 | 2026-08-25 |  |  | start no earlier than 2026-07-29 | 160h |
| 3 | FCMP++ Phase 3 audit | 20d | 2026-08-26 | 2026-09-22 | 2 |  |  | 160h |
| 4 | FCMP++ further integretion audit? | 40d | 2026-08-26 | 2026-10-20 | 1 |  |  | 320h |
| 5 | FFI and selene_scalar_from_bytes | 2d | 2026-07-24 | 2026-07-27 |  |  | start no earlier than 2026-07-24 | 16h |
| 6 | Curve trees and outputs -> leaves | 3d | 2026-07-28 | 2026-07-30 | 5 |  |  | 24h |
| 7 | Tower cycle and hash_grow | 3d | 2026-07-31 | 2026-08-04 | 6 |  |  | 24h |
| 8 | point_to_cycle_scalar | 2d | 2026-08-05 | 2026-08-06 | 7 |  |  | 16h |
| 9 | get_tree_extension | 3d | 2026-08-07 | 2026-08-11 | 8 |  |  | 24h |
| 10 | FCMP++ Phase 3 merges | 5d | 2026-08-12 | 2026-08-18 | 9 |  |  | 40h |
| 11 | mx25519 unclamped + other PRs | 2d | 2026-07-22 | 2026-07-23 |  |  |  | 16h |
| 12 | Generator T,U,V fix merges | 0.78d | 2026-07-27 | 2026-07-27 |  | 14% | start no earlier than 2026-07-27 | 6.25h |
| 13 | mx25519 merge | 3d | 2026-07-24 | 2026-07-28 | 11 |  |  | 24h |
| 14 | carrot_core merge | 5d | 2026-07-29 | 2026-08-04 | 12, 13 |  |  | 40h |
| 15 | UkoeHB's carrot_impl review | 2d | 2026-07-27 | 2026-07-28 |  |  | start no earlier than 2026-07-27 | 16h |
| 16 | carrot_impl merge | 5d | 2026-08-05 | 2026-08-11 | 15, 14 |  |  | 40h |
| 17 | carrot-fcmp integration merges | 5d | 2026-08-12 | 2026-08-18 | 16 |  |  | 40h |
| 18 | RandomX v2 + intermediate merge | 5d | 2026-07-22 | 2026-07-28 |  |  |  | 40h |
| 19 | TX relay v2 double-spend debug | 5d | 2026-07-22 | 2026-07-28 |  |  |  | 40h |
| 20 | TX relay v2 merge | 10d | 2026-07-29 | 2026-08-11 | 19 |  |  | 80h |
| 21 | guix: add rust | 5d | 2026-07-22 | 2026-07-28 |  |  |  | 40h |
| 22 | guix: bootstapple FCMP++ | 5d | 2026-07-29 | 2026-08-04 | 21 |  |  | 40h |
| 23 | HF activation merge | 1d | 2026-08-19 | 2026-08-19 | 22, 20, 18, 17, 10 | 22% |  | 8h |
| 24 | Pre-release code freeze | 20d | 2026-08-20 | 2026-09-16 | 23 |  |  | 160h |
| 25 | First HF-enabled binary release | 5d | 2026-09-17 | 2026-09-23 | 24, 23 |  |  | 40h |
| 26 | HF mandatory waiting period | 120d | 2026-08-20 | 2027-02-03 | 23 |  |  | 960h |
| 27 | Circuit + Gadget follow-up dev | 10d | 2026-08-26 | 2026-09-08 | 1 |  |  | 80h |
| 28 | FCMP++ integration follow-up dev | 10d | 2026-10-21 | 2026-11-03 | 3, 4, 27 |  |  | 80h |
| 29 | Follow-up fix binary release | 5d | 2026-11-04 | 2026-11-10 | 28 |  |  | 40h |
| 30 | Trezor HW dev | 90d | 2026-07-22 | 2026-11-24 |  |  |  | 720h |
| 31 | Trezor HW merges | 5d | 2026-11-25 | 2026-12-01 | 30 |  |  | 40h |
| 32 | Ledger HW dev | 90d | 2026-07-22 | 2026-11-24 |  |  |  | 720h |
| 33 | Ledger HW merges | 5d | 2026-11-25 | 2026-12-01 | 32 |  |  | 40h |
| 34 | Multisig dev | 45d | 2026-07-22 | 2026-09-22 |  |  |  | 360h |
| 35 | Multisig merges | 1d | 2026-09-23 | 2026-09-23 | 34 |  |  | 8h |
| 36 | Hot-cold dev | 5d | 2026-07-22 | 2026-07-28 |  |  |  | 40h |
| 37 | Hot-cold merges | 5d | 2026-07-29 | 2026-08-04 | 36 |  |  | 40h |
| 38 | Wallet knowledge dev | 5d | 2026-07-29 | 2026-08-04 | 36 |  |  | 40h |
| 39 | Wallet knowledge merges | 5d | 2026-08-05 | 2026-08-11 | 38 |  |  | 40h |
| 40 | Fully-featured merge | 1d | 2026-12-02 | 2026-12-02 | 28, 39, 37, 23, 35, 33, 31 |  |  | 8h |
| 41 | Fully-featured binary release | 5d | 2026-12-03 | 2026-12-09 | 40 |  |  | 40h |
| 42 | Pre-activation code freeze | 40d | 2026-12-03 | 2027-01-27 | 40 |  |  | 320h |
| 43 | FCMP++ activation | 1d | 2027-02-04 | 2027-02-04 | 42, 26 |  |  | 8h |

Notes:
- 5: https://github.com/monero-project/monero/pull/10359
- 6: https://github.com/monero-project/monero/pull/10360
- 7: https://github.com/monero-project/monero/pull/10361
- 8: https://github.com/monero-project/monero/pull/10362
- 9: https://github.com/monero-project/monero/pull/10724
- 15: https://github.com/seraphis-migration/monero/pull/427
